# projet_machine_cafe

Schedule from MS Project, 2016-01-06 to 2016-05-09, status date 2016-01-11, 7 hours a day, costs in €, A marks actual dates.

## Calendars

- Standard: Mon-Fri 09:00-12:00, 14:00-18:00; Sat-Sun off.

## Resources

| Resource | Rate |
| --- | --- |
| technique4 | 7.14 |
| ingénieur3 | 10 |
| technique3 | 7.14 |
| ingénieur1 | 10 |
| achat1 | 10 |
| ingénieur2 | 10 |
| technique1 | 7.14 |
| technique2 | 7.14 |
| achat2 | 7.14 |

## Schedule

| ID | Task | Type | Duration | Start | Finish | Predecessors | Complete | Remaining | Baseline start | Baseline finish | Baseline duration | Total slack | Free slack | Constraint | Resources | Work | Actual work | Cost | Baseline cost | Actual cost |
| --- | --- | --- | --- | --- | --- | --- | --- | --- | --- | --- | --- | --- | --- | --- | --- | --- | --- | --- | --- | --- |
| 1 | Début | milestone | 0w | 2016-01-06 A | 2016-01-06 A |  | 100% |  | 2016-01-06 | 2016-01-06 |  |  |  |  |  |  |  |  |  |  |
| 2 | Commande et livraison des pièces pour la machine |  | 6w | 2016-01-06 A | 2016-02-16 | 1 | 13% | 5.23w | 2016-01-06 | 2016-02-16 | 6w | 4d |  |  | achat1; technique1; ingénieur1 | 630h | 81h | 5,700 | 35,700 | 732.86 |
| 3 | Commande et livraison des consommables |  | 3w | 2016-02-24 | 2016-03-15 | 1 |  |  | 2016-02-24 | 2016-03-15 | 3w | 9d |  | start no earlier than 2016-02-24 | achat2 | 105h |  | 750 | 5,250 |  |
| 4 | Recettes interne du fonctionnement de la machine |  | 5w | 2016-03-29 | 2016-05-02 | 3, 10 |  |  | 2016-03-29 | 2016-05-02 | 5w | 0d |  |  | technique1; ingénieur1; ingénieur2 | 525h |  | 4,750 | 33,250 |  |
| 5 | Remise aux normes électrique de la salle café |  | 3w | 2016-02-03 | 2016-02-23 | 9 |  |  | 2016-02-03 | 2016-02-23 | 3w | 4d | 0d |  | technique3; technique2; ingénieur2; achat2 | 420h |  | 3,300 | 23,100 |  |
| 6 | Assemblage de la nouvelle machine |  | 3w | 2016-02-23 | 2016-03-14 | 2 |  |  | 2016-02-23 | 2016-03-14 | 3w | 0d |  | start no earlier than 2016-02-23 | ingénieur3; technique1; technique4; technique3 | 413h |  | 3,250 | 22,750 |  |
| 7 | Vérification des nouvelles installations électriques sur site |  | 2w | 2016-02-24 | 2016-03-08 | 5 |  |  | 2016-02-24 | 2016-03-08 | 2w | 4d |  | start no earlier than 2016-02-24 | achat1; ingénieur2; technique2 | 210h |  | 1,900 | 11,900 |  |
| 8 | Désassemblage et évacuation de l'ancienne machine |  | 2w | 2016-02-03 | 2016-02-16 | 1 |  |  | 2016-02-03 | 2016-02-16 | 2w | 19d |  | start no earlier than 2016-02-03 | technique3; technique1; technique4; ingénieur3 | 70h |  | 700 | 4,900 |  |
| 9 | Etude de la disposition des locaux et du nouveau câblage |  | 4w | 2016-01-06 A | 2016-02-02 | 1 | 19% | 3.23w | 2016-01-06 | 2016-02-02 | 4w | 4d | 0d |  | ingénieur2; ingénieur3; achat2 | 420h | 81h | 3,800 | 26,600 | 732.86 |
| 10 | Livraison et installation de la nouvelle machine |  | 2w | 2016-03-15 | 2016-03-28 | 6, 7, 8 |  |  | 2016-03-15 | 2016-03-28 | 2w | 0d |  |  | ingénieur1; technique1; technique2 | 210h |  | 1,700 | 11,900 |  |
| 11 | Essais et réception |  | 1w | 2016-05-03 | 2016-05-09 | 4 |  |  | 2016-05-03 | 2016-05-09 | 1w | 0d |  |  | ingénieur1; achat1; technique1 | 105h |  | 950 | 5,950 |  |
